# 微贷平台V1.1版本设计计划

Schedule from MS Project, 2017-07-10 to 2017-11-17, costs in ¥.

## Calendars

- 标准: Mon-Fri 08:00-12:00, 13:00-17:00; Sat-Sun off.

## Resources

| Resource |
| --- |
| 侯凯 |
| 夏金龙 |
| 徐明曦 |
| 聂正文 |
| 余苗 |
| 王将 |
| 宋雪 |
| 尹魏方 |
| 包梅锦 |
| 吴登礼 |
| 黄旭 |

## Schedule

| ID | WBS | Task | Type | Duration | Start | Finish | Predecessors | Total slack | Free slack | Constraint | Resources | Work | Cost |
| --- | --- | --- | --- | --- | --- | --- | --- | --- | --- | --- | --- | --- | --- |
| 1 | 1 | **总计划** |  | 95d | 2017-07-10 | 2017-11-17 |  | 0d |  |  |  | 3120h | 313,272 |
| 2 | 1.1 | **项目准备** |  | 1d | 2017-09-13 | 2017-09-13 |  |  |  |  |  | 8h | 800 |
| 3 | 1.1.1 | 工作量评估 | manual | 1d | 2017-09-13 | 2017-09-13 |  |  |  |  | 包梅锦 | 8h | 800 |
| 4 | 1.2 | **项目启动** |  | 1d | 2017-09-13 | 2017-09-13 |  |  |  |  |  | 8h | 800 |
| 5 | 1.2.1 | 项目章程、项目计划、配置管理计划、GIT权限开通、项目启动会议 |  | 1d | 2017-09-13 | 2017-09-13 |  | 0d |  |  | 包梅锦 | 8h | 800 |
| 6 | 1.3 | **需求确认** |  | 60d | 2017-07-10 | 2017-09-29 |  |  |  |  |  | 64h | 6,592 |
| 7 | 1.3.1 | 需求调研 |  | 3d | 2017-09-13 | 2017-09-15 |  | 5d | 0d | start no earlier than 2017-09-13 | 尹魏方 | 24h | 2,472 |
| 8 | 1.3.2 | PC原型确认/需求文档确认 |  | 5d | 2017-09-18 | 2017-09-22 | 7 | 5d |  |  | 尹魏方 | 40h | 4,120 |
| 9 | 1.4 | **环境准备及技术准备** |  | 30d | 2017-09-13 | 2017-10-24 |  |  |  |  |  | 1000h | 97,120 |
| 10 | 1.4.1 | 框架搭建 | manual | 6d | 2017-09-13 | 2017-09-20 |  |  |  |  | 吴登礼 | 48h |  |
| 11 | 1.4.2 | 单点登录/分库分表 | manual | 13d | 2017-09-13 | 2017-09-29 |  |  |  |  | 包梅锦 | 104h | 10,400 |
| 12 | 1.4.3 | 异步查证处理/规则引擎/分库分表/报表系统 | manual | 13d | 2017-09-13 | 2017-09-29 |  |  |  |  | 侯凯 | 104h | 10,400 |
| 13 | 1.4.4 | 搜索引擎/缓存/工作流/管理员权限 | manual | 13d | 2017-09-13 | 2017-09-29 |  |  |  |  | 黄旭 | 104h | 10,400 |
| 14 | 1.4.5 | 多线程/高并发/定时器、数据迁移 | manual | 13d | 2017-09-13 | 2017-09-29 |  |  |  |  | 王将 | 104h | 10,712 |
| 15 | 1.4.6 | 前端react+redux+noteJs | manual | 13d | 2017-09-13 | 2017-09-29 |  |  |  |  | 宋雪; 余苗 | 208h | 21,424 |
| 16 | 1.4.7 | docker+自动化接口测试+自动化集成测试+自动部署 | manual | 13d | 2017-09-13 | 2017-09-29 |  |  |  |  | 徐明曦; 聂正文; 夏金龙 | 312h | 32,136 |
| 17 | 1.4.8 | 服务器购买及环境搭建 |  | 2d | 2017-10-23 | 2017-10-24 |  | 18d |  | start no earlier than 2017-10-23 | 徐明曦 | 16h | 1,648 |
| 18 | 1.5 | **设计阶段** |  | 20d | 2017-09-25 | 2017-10-20 |  | 10d |  |  |  | 760h | 77,560 |
| 19 | 1.5.1 | UI设计和确认 |  | 5d | 2017-09-25 | 2017-09-29 |  | 35d |  | finish no earlier than 2017-09-29 | 尹魏方 | 40h | 4,120 |
| 20 | 1.5.2 | 前端页面开发 | manual | 10d | 2017-10-09 | 2017-10-20 |  |  |  |  | 宋雪; 余苗 | 160h | 16,480 |
| 21 | 1.5.3 | 系统概要设计、分模块详细设计（包括接口、数据库） |  | 10d | 2017-10-09 | 2017-10-20 |  | 20d |  | start no earlier than 2017-10-09 | 包梅锦; 侯凯; 黄旭; 王将 | 320h | 32,240 |
| 22 | 1.5.4 | 测试案例设计 |  | 10d | 2017-10-09 | 2017-10-20 | 19 | 20d |  | start no earlier than 2017-10-09 | 聂正文; 夏金龙; 徐明曦 | 240h | 24,720 |
| 23 | 1.6 | **编码开发** |  | 20d | 2017-10-23 | 2017-11-17 |  |  |  |  |  | 960h | 97,440 |
| 24 | 1.6.1 | 后端代码开发及前端接口联调 |  | 10d | 2017-10-23 | 2017-11-03 |  | 0d |  | start no earlier than 2017-10-23 | 包梅锦; 侯凯; 黄旭; 宋雪; 王将; 余苗 | 480h | 48,720 |
| 25 | 1.6.2 | 系统联调 |  | 5d | 2017-11-06 | 2017-11-10 | 24 | 0d |  |  | 包梅锦; 侯凯; 黄旭; 宋雪; 王将; 余苗 | 240h | 24,360 |
| 26 | 1.6.3 | 缺陷修改 |  | 5d | 2017-11-13 | 2017-11-17 | 25 | 0d |  | finish no earlier than 2017-11-17 | 包梅锦; 侯凯; 黄旭; 宋雪; 王将; 余苗 | 240h | 24,360 |

| ID | WBS | Task | Type | Duration | Start | Finish | Total slack | Constraint | Resources | Work | Cost |
| --- | --- | --- | --- | --- | --- | --- | --- | --- | --- | --- | --- |
| 27 | 1.7 | **测试** |  | 13d | 2017-11-01 | 2017-11-17 | 0d |  |  | 320h | 32,960 |
| 28 | 1.7.1 | SIT测试系统测试 |  | 13d | 2017-11-01 | 2017-11-17 | 0d | finish no earlier than 2017-11-17 | 聂正文; 夏金龙; 徐明曦 | 312h | 32,136 |
| 29 | 1.7.2 | 上线手册编写 | manual | 1d | 2017-11-17 | 2017-11-17 |  |  | 尹魏方 | 8h | 824 |
