# 微贷平台V1.1版本设计计划

Schedule from MS Project, 2017-07-03 to 2017-08-22, costs in ¥.

## Calendars

- 标准: Mon-Fri 08:00-12:00, 13:00-17:00; Sat-Sun off.

## Resources

| Resource |
| --- |
| 碧霞 |
| 赵伯阳 |
| 王飞虎 |
| 宋作为 |
| 庄伟 |
| 申阳 |
| 尹魏方 |
| 常磊磊 |
| 宋雪 |
| 刘玉超 |
| 包梅锦 |
| 徐明曦 |
| 吴登礼 |
| 客户 |

## Schedule

| ID | WBS | Task | Type | Duration | Start | Finish | Predecessors | Total slack | Free slack | Constraint | Resources | Work | Cost |
| --- | --- | --- | --- | --- | --- | --- | --- | --- | --- | --- | --- | --- | --- |
| 1 | 1 | **总计划** |  | 37d | 2017-07-03 | 2017-08-22 |  | 0d |  |  |  | 2936h | 271,096 |
| 2 | 1.1 | **项目准备** |  | 1d | 2017-07-03 | 2017-07-03 |  |  |  |  |  | 8h | 824 |
| 3 | 1.1.1 | 工作量评估 | manual | 1d | 2017-07-03 | 2017-07-03 |  |  |  |  | 包梅锦 | 8h | 824 |
| 4 | 1.2 | **项目启动** |  | 1d | 2017-07-03 | 2017-07-03 |  |  |  |  |  | 8h | 824 |
| 5 | 1.2.1 | 项目章程、项目计划、配置管理计划、GIT权限开通、项目启动会议 |  | 1d | 2017-07-03 | 2017-07-03 |  | 0d |  |  | 包梅锦 | 8h | 824 |
| 6 | 1.3 | **需求确认** |  | 5d | 2017-07-10 | 2017-07-14 |  |  |  |  |  | 280h | 24,720 |
| 7 | 1.3.1 | 需求调研 |  | 5d | 2017-07-10 | 2017-07-14 |  | 27d |  | start no earlier than 2017-07-10 | 包梅锦; 赵伯阳 | 80h | 8,240 |
| 8 | 1.3.2 | PC原型确认/需求文档确认 |  | 5d | 2017-07-10 | 2017-07-14 |  | 27d |  | start no earlier than 2017-07-10 | 包梅锦; 客户; 赵伯阳 | 120h | 8,240 |
| 9 | 1.3.3 | 需求讲解和分析 |  | 5d | 2017-07-10 | 2017-07-14 |  | 27d |  | start no earlier than 2017-07-10 | 包梅锦; 赵伯阳 | 80h | 8,240 |
| 10 | 1.4 | **环境准备** |  | 10d | 2017-07-03 | 2017-07-14 |  |  |  |  |  | 448h | 38,728 |
| 11 | 1.4.1 | 开发环境申请及搭建 |  | 2d | 2017-07-03 | 2017-07-04 |  | 8d |  |  | 庄伟 | 16h | 1,648 |
| 12 | 1.4.2 | 技术准备（接口分析，框架准备、管理台权限、任务调度功能开发） | manual | 9d | 2017-07-04 | 2017-07-14 |  |  |  |  | 刘玉超; 申阳; 宋作为; 王飞虎; 庄伟; 吴登礼 | 432h | 37,080 |
| 13 | 1.5 | **设计阶段** |  | 19d | 2017-07-04 | 2017-07-28 |  | 9d |  |  |  | 1048h | 92,288 |
| 14 | 1.5.1 | UI设计和确认 |  | 9d | 2017-07-04 | 2017-07-14 |  | 17d | 0d | start no earlier than 2017-07-04 | 尹魏方; 客户; 赵伯阳; 包梅锦 | 288h | 22,248 |
| 15 | 1.5.2 | 前端美工开发 | manual | 10d | 2017-07-17 | 2017-07-28 |  |  |  |  | 宋雪; 碧霞 | 160h | 8,240 |
| 16 | 1.5.3 | 系统概要设计 |  | 5d | 2017-07-17 | 2017-07-21 |  | 22d |  | start no earlier than 2017-07-17 | 包梅锦; 申阳; 宋作为; 王飞虎; 庄伟 | 200h | 20,600 |
| 17 | 1.5.4 | 分模块详细设计（包括接口、数据库） |  | 5d | 2017-07-17 | 2017-07-21 |  | 22d |  | start no earlier than 2017-07-17 | 庄伟; 刘玉超; 宋作为; 申阳; 王飞虎; 包梅锦 | 240h | 24,720 |
| 18 | 1.5.5 | 测试案例设计 |  | 10d | 2017-07-17 | 2017-07-28 | 14 | 17d |  |  | 常磊磊; 徐明曦 | 160h | 16,480 |
| 19 | 1.6 | **编码开发** |  | 17d | 2017-07-24 | 2017-08-15 | 17 |  |  |  |  | 960h | 98,880 |
| 20 | 1.6.1 | 管理台开发 |  | 15d | 2017-07-24 | 2017-08-11 | 17 | 7d |  | start no earlier than 2017-07-24 | 王飞虎; 庄伟 | 240h | 24,720 |
| 21 | 1.6.2 | 外部接口对接 |  | 15d | 2017-07-24 | 2017-08-11 | 17 | 7d |  | start no earlier than 2017-07-24 | 庄伟; 申阳 | 240h | 24,720 |
| 22 | 1.6.3 | 跑批查证、定时任务调度 |  | 15d | 2017-07-24 | 2017-08-11 | 17 | 7d |  | start no earlier than 2017-07-24 | 宋作为 | 120h | 12,360 |
| 23 | 1.6.4 | 系统联调 |  | 2d | 2017-08-14 | 2017-08-15 |  | 5d |  | start no earlier than 2017-08-14 | 宋作为; 申阳; 刘玉超; 王飞虎; 庄伟 | 80h | 8,240 |
| 24 | 1.6.5 | 缺陷修改 |  | 7d | 2017-08-07 | 2017-08-15 |  | 5d |  | start no earlier than 2017-08-07 | 王飞虎; 宋作为; 申阳; 刘玉超; 庄伟 | 280h | 28,840 |

| ID | WBS | Task | Type | Duration | Start | Finish | Total slack | Constraint | Resources | Work | Cost |
| --- | --- | --- | --- | --- | --- | --- | --- | --- | --- | --- | --- |
| 25 | 1.7 | **测试** |  | 17d | 2017-07-31 | 2017-08-22 | 0d |  |  | 184h | 14,832 |
| 26 | 1.7.1 | SIT测试系统测试 |  | 12d | 2017-07-31 | 2017-08-15 | 5d | finish no earlier than 2017-08-15 | 常磊磊 | 96h | 9,888 |
| 27 | 1.7.2 | 上线手册编写 | manual | 1d | 2017-08-15 | 2017-08-15 |  |  | 包梅锦 | 8h | 824 |
| 28 | 1.7.3 | 验收测试 | manual | 5d | 2017-08-16 | 2017-08-22 |  | start no earlier than 2017-08-16 | 客户; 包梅锦 | 80h | 4,120 |
